# Chasse immobilière — Belkacem

Schedule from GanttProject, 2026-07-27 to 2026-11-16.
Planning de référence actualisé au 05/09/2026. Les tâches réalisées avant cette date sont positionnées rétrospectivement à partir des livrables et validations effectivement produits. Les dépendances souples sur la partie historique matérialisent l'ordre logique sans déplacer les dates constatées. À partir du 07/09/2026, les tâches non réalisées sont planifiées dans le futur avec des dépendances fortes. Rendu final prévu le 31/12/2026.

## Calendars

- Project calendar: Mon-Sun working.

## Schedule

| ID | WBS | Task | Type | Duration | Start | Finish | Predecessors | Complete |
| --- | --- | --- | --- | --- | --- | --- | --- | --- |
| 1 | 1 | **Phase 1 — Audit de l’existant** |  | 2d | 2026-07-27 | 2026-07-28 |  | 100% |
| 2 | 1.1 | Analyser les consignes et l’existant |  | 1d | 2026-07-27 | 2026-07-27 |  | 100% |
| 3 | 1.2 | Cartographier le système d’information existant |  | 1d | 2026-07-27 | 2026-07-27 |  | 100% |
| 4 | 1.3 | Analyser la base de données et identifier les anomalies |  | 1d | 2026-07-27 | 2026-07-27 |  | 100% |
| 5 | 1.4 | Rédiger l’analyse et le registre des anomalies |  | 1d | 2026-07-28 | 2026-07-28 | 2, 4 | 100% |
| 6 | 1.5 | Réaliser l’analyse SWOT |  | 1d | 2026-07-28 | 2026-07-28 |  | 100% |
| 7 | 1.6 | Validation de la phase 1 | milestone | 0d | 2026-07-29 | 2026-07-29 | 5, 6 | 100% |
| 8 | 2 | **Phase 2 — Modèle cible et reprise des données** |  | 50d | 2026-07-29 | 2026-09-16 |  | 73% |
| 9 | 2.1 | Cadrer les besoins métier et les règles de gestion |  | 5d | 2026-07-29 | 2026-08-02 |  | 100% |
| 10 | 2.2 | Concevoir et valider le MCD cible |  | 6d | 2026-08-05 | 2026-08-10 | 9 | 100% |
| 11 | 2.3 | Concevoir et valider le MLD cible |  | 4d | 2026-08-13 | 2026-08-16 | 10 | 100% |
| 12 | 2.4 | Construire et exécuter migration-final.sql |  | 3d | 2026-08-19 | 2026-08-21 | 11 | 100% |
| 13 | 2.5 | Construire et exécuter reprise-donnees-final.sql |  | 5d | 2026-08-24 | 2026-08-28 | 12 | 100% |
| 14 | 2.6 | Produire la preuve de validation de la reprise |  | 2d | 2026-08-31 | 2026-09-01 | 13 | 100% |
| 15 | 2.7 | Finaliser et valider le cahier des charges technique |  | 3d | 2026-09-02 | 2026-09-04 | 14 | 100% |
| 16 | 2.8 | Réaliser l’étude d’opportunité |  | 1d | 2026-09-05 | 2026-09-05 | 15 | 100% |
| 17 | 2.9 | Prioriser le backlog fonctionnel |  | 1d | 2026-09-05 | 2026-09-05 | 16 | 100% |
| 18 | 2.10 | Formaliser BPMN et RACI |  | 2d | 2026-09-05 | 2026-09-06 | 17 | 100% |
| 19 | 2.11 | Consolider RGPD, éco-conception et traçabilité |  | 3d | 2026-09-14 | 2026-09-16 | 18 |  |
| 20 | 2.12 | Validation de la phase 2 | milestone | 0d | 2026-09-17 | 2026-09-17 | 19 |  |
| 21 | 3 | **Phase 3 — Architecture de croissance et décisionnel** |  | 23d | 2026-09-17 | 2026-10-09 |  |  |
| 22 | 3.1 | Analyser les volumes, la croissance et les contraintes 3V |  | 4d | 2026-09-17 | 2026-09-20 | 20 |  |
| 23 | 3.2 | Concevoir la séparation OLTP / OLAP |  | 5d | 2026-09-21 | 2026-09-25 | 22 |  |
| 24 | 3.3 | Étudier l’architecture PostgreSQL distribuée / Citus |  | 5d | 2026-09-21 | 2026-09-25 | 22 |  |
| 25 | 3.4 | Prototyper Citus avec k3d |  | 5d | 2026-09-26 | 2026-09-30 | 24 |  |
| 26 | 3.5 | Définir indexation, partitionnement et stratégie de performance |  | 4d | 2026-10-01 | 2026-10-04 | 23, 25 |  |
| 27 | 3.6 | Formaliser PCA, PRA et stratégie de migration |  | 5d | 2026-10-05 | 2026-10-09 | 26 |  |
| 28 | 3.7 | Concevoir le modèle décisionnel et les indicateurs |  | 5d | 2026-09-26 | 2026-09-30 | 23 |  |
| 29 | 3.8 | Validation de la phase 3 | milestone | 0d | 2026-10-10 | 2026-10-10 | 27, 28 |  |

Notes:
- 15: Dernier livrable technique de Phase 2 considéré réalisé au 05/09/2026.
- 16: Étude d’opportunité produite, contrôlée et validée le 05/09/2026. Preuve : 02-modele-cible/etude-opportunite.md, commit 19f674e.
- 17: Backlog fonctionnel priorisé produit, contrôlé et validé le 05/09/2026. Preuve : 02-modele-cible/backlog-priorise.md, commit 7380d91.
- 18: BPMN métier produit, contrôlé dans Camunda, exporté en PNG et validé le 05/09/2026. Preuves : 02-modele-cible/processus-metier.bpmn et processus-metier.png, commit 5752e97. RACI adapté au projet solo produit, contrôlé et validé le 05/09/2026. Preuve : 02-modele-cible/RACI.md, commit 54cd765.
- 20: Jalon futur : validation complète de la Phase 2 après les livrables complémentaires.

| ID | WBS | Task | Type | Duration | Start | Finish | Predecessors | Complete |
| --- | --- | --- | --- | --- | --- | --- | --- | --- |
| 30 | 4 | **Phase 4 — Backend, API et IA** |  | 27d | 2026-10-10 | 2026-11-05 |  |  |
| 31 | 4.1 | Concevoir l’architecture applicative du backend |  | 4d | 2026-10-10 | 2026-10-13 | 29 |  |
| 32 | 4.2 | Développer l’API et les accès aux données |  | 8d | 2026-10-14 | 2026-10-21 | 31 |  |
| 33 | 4.3 | Implémenter les règles métier et contrôles d’accès |  | 5d | 2026-10-22 | 2026-10-26 | 32 |  |
| 34 | 4.4 | Préparer le pipeline de matching et les traitements IA |  | 6d | 2026-10-22 | 2026-10-27 | 32 |  |
| 35 | 4.5 | Réaliser les tests fonctionnels, techniques et sécurité |  | 5d | 2026-10-28 | 2026-11-01 | 33, 34 |  |
| 36 | 4.6 | Documenter API, accessibilité et exploitation |  | 4d | 2026-11-02 | 2026-11-05 | 35 |  |
| 37 | 4.7 | Validation de la phase 4 | milestone | 0d | 2026-11-06 | 2026-11-06 | 36 |  |
| 38 | 5 | **Finalisation du dossier et préparation de la soutenance** |  | 5d | 2026-11-02 | 2026-11-06 |  |  |
| 39 | 5.1 | Consolider les preuves et la traçabilité des compétences |  | 2d | 2026-11-02 | 2026-11-03 | 35 |  |
| 40 | 5.2 | Finaliser l’auto-évaluation |  | 1d | 2026-11-04 | 2026-11-04 | 39 |  |
| 41 | 5.3 | Préparer le support de soutenance |  | 2d | 2026-11-04 | 2026-11-05 | 39 |  |
| 42 | 5.4 | Répéter la soutenance et contrôler le dépôt final |  | 1d | 2026-11-06 | 2026-11-06 | 40, 41 |  |
| 43 | 5.5 | Rendu final | milestone | 0d | 2026-11-07 | 2026-11-07 | 37, 42 |  |
| 44 | 6 | **Pilotage transversal** |  | 113d | 2026-07-27 | 2026-11-16 |  | 47% |
| 45 | 6.1 | Maintenir le journal de décisions |  | 113d | 2026-07-27 | 2026-11-16 |  | 60% |
| 46 | 6.2 | Mettre à jour le Gantt aux jalons |  | 113d | 2026-07-27 | 2026-11-16 |  | 55% |
| 47 | 6.3 | Maintenir l’auto-évaluation RNCP |  | 113d | 2026-07-27 | 2026-11-16 |  | 40% |
| 48 | 6.4 | Maintenir la traçabilité des compétences |  | 113d | 2026-07-27 | 2026-11-16 |  | 35% |
